# 项目1.0.1

Schedule from MS Project, 2015-03-19 to 2015-07-01, A marks actual dates.
....

## Calendars

- 标准: Mon-Fri 08:00-12:00, 13:00-17:00; Sat-Sun off.

## Resources

| Resource |
| --- |
| 1.0.1 |
| 王斐 |
| 张晋卿 |
| 张振 |
| 李涵 |

## Schedule

| ID | WBS | Task | Type | Duration | Start | Finish | Predecessors | Remaining | Constraint | Resources | Work |
| --- | --- | --- | --- | --- | --- | --- | --- | --- | --- | --- | --- |
| 1 | 1 | 项目确定及介绍 | manual | 4d | 2015-03-19 A | 2015-03-24 |  | 4d |  |  |  |
| 2 | 2 | 计划书 | manual | 3d | 2015-03-25 | 2015-03-27 | 1 |  |  |  |  |
| 3 | 3 | **软件需求分析** |  | 6d | 2015-03-30 | 2015-04-05 | 2, 1 |  |  |  | 27h |
| 4 | 3.1 | 更新任务计划书 | manual | 1h | 2015-04-03 | 2015-04-03 |  |  | start no earlier than 2015-04-03 | 王斐 [50%]; 张晋卿 [50%] | 1h |
| 5 | 3.2 | 开会讨论需求 | manual | 2h | 2015-04-04 | 2015-04-04 |  |  |  | 王斐 [25%]; 张晋卿 [25%]; 李涵 [25%]; 张振 [25%] | 2h |
| 6 | 3.3 | 制作RUCM | manual | 16h | 2015-04-04 | 2015-04-05 |  |  |  | 王斐 [25%]; 李涵 [25%]; 张晋卿 [25%]; 张振 [25%] | 16h |
| 7 | 3.4 | 制作检查单 | manual | 1d | 2015-04-05 | 2015-04-05 |  |  |  | 张晋卿 [25%]; 王斐 [25%]; 张振 [25%]; 李涵 [25%] | 8h |
| 8 | 4 | 软件需求评审 | manual | 2d | 2015-04-06 | 2015-04-07 | 3 |  |  |  |  |
| 9 | 5 | 软件需求复评审 | manual | 2d | 2015-04-07 | 2015-04-08 | 8 |  |  |  |  |
| 10 | 6 | 软件功能分析 | manual | 9d | 2015-04-09 | 2015-04-21 | 9 |  |  |  |  |
| 11 | 7 | 软件测试 | manual | 2d | 2015-04-22 | 2015-04-23 | 10 |  |  |  |  |
| 12 | 8 | 软件测试评审 | manual | 3d | 2015-04-24 | 2015-04-28 | 11 |  |  |  |  |
| 13 | 9 | 软件测试复评审 | manual | 5d | 2015-04-29 | 2015-05-05 | 12 |  |  |  |  |
| 14 | 10 | 软件产品更新与展示 | manual | 4d | 2015-05-07 | 2015-05-12 | 1, 2, 3, 8 |  |  |  |  |
| 15 | 11 | 演示 | manual | 5d | 2015-05-13 | 2015-05-19 | 13 |  |  |  |  |
| 16 | 12 | 综合实验分析 | manual | 4d | 2015-05-21 | 2015-05-26 | 15 |  |  |  |  |
| 17 | 13 | 综合实验总结 | manual | 4d | 2015-05-28 | 2015-06-02 | 16 |  |  |  |  |
| 18 | 14 | 软件进度计划与控制 | manual | 75d | 2015-03-19 | 2015-07-01 |  |  |  |  |  |
| 19 | 15 | 工作量估计与统计分析 | manual | 75d | 2015-03-19 | 2015-07-01 |  |  |  |  |  |
| 20 | 16 | 配置管理 | manual | 75d | 2015-03-19 | 2015-07-01 |  |  |  |  |  |
